# Mert_Özgen_16070001190

Schedule from MS Project, 2019-01-02 to 2019-06-07, costs in $.

## Calendars

- Standard: Mon-Fri 08:00-12:00, 13:00-17:00; Sat-Sun off.
- 6 Day Cal: Mon-Sat 08:00-12:00, 13:00-17:00; Sun off.

## Resources

| Resource | Unit | Rate |
| --- | --- | --- |
| Project Manager |  |  |
| Labor |  | 20 |
| Scheduler |  | 60 |
| Architect |  | 80 |
| Procurement Engineer |  | 40 |
| Engineering Consultant |  |  |
| Excavator |  | 75 |
| Brick | m2 | 100 |
| Mobilization |  |  |
| Transportation Company |  |  |

## Schedule

| ID | WBS | Task | Type | Duration | Start | Finish | Predecessors | Baseline start | Baseline finish | Baseline duration | Total slack | Free slack | Calendar | Resources | Work | Cost | Baseline cost |
| --- | --- | --- | --- | --- | --- | --- | --- | --- | --- | --- | --- | --- | --- | --- | --- | --- | --- |
| 1 | 1 | **Villa Project** |  | 113d | 2019-01-02 | 2019-06-07 |  | 2019-01-02 | 2019-06-07 | 113d | 0d |  |  |  | 2128h | 93,400 | 93,400 |
| 2 | 1.1 | **Pre‐Construction** |  | 63d | 2019-01-02 | 2019-03-29 |  | 2019-01-02 | 2019-03-29 | 63d | 0d |  |  |  | 488h | 39,400 | 39,400 |
| 3 | 1.1.1 | Start Project | milestone | 0d | 2019-01-02 | 2019-01-02 |  | 2019-01-02 | 2019-01-02 | 0d | 0d |  |  |  |  |  |  |
| 4 | 1.1.2 | Decide Project Team |  | 5d | 2019-01-02 | 2019-01-08 | 3 | 2019-01-02 | 2019-01-08 | 5d | 0d |  |  | Project Manager | 40h |  |  |
| 5 | 1.1.3 | Prepare Project Baselines |  | 10d | 2019-01-04 | 2019-01-17 | 4SS+2d | 2019-01-04 | 2019-01-17 | 10d | 0d |  |  | Scheduler | 80h | 4,800 | 4,800 |
| 6 | 1.1.4 | Project Kick‐off Meeting |  | 1d | 2019-01-18 | 2019-01-18 | 5 | 2019-01-18 | 2019-01-18 | 1d | 0d |  |  | Project Manager | 8h |  |  |
| 7 | 1.1.5 | Design the Villa |  | 15d | 2019-01-21 | 2019-02-08 | 6 | 2019-01-21 | 2019-02-08 | 15d | 0d |  |  | Architect | 120h | 9,600 | 9,600 |
| 8 | 1.1.6 | Mobilize Equipment |  | 20d | 2019-01-21 | 2019-02-15 | 6 | 2019-01-21 | 2019-02-15 | 20d | 0d |  |  | Mobilization [0.1%] |  | 5,000 | 5,000 |
| 9 | 1.1.7 | Get Design Approval |  | 5d | 2019-02-09 | 2019-02-14 | 7 | 2019-02-09 | 2019-02-14 | 5d | 97d |  | 6 Day Cal | Engineering Consultant [0.1%] |  | 10,000 | 10,000 |
| 10 | 1.1.8 | Get Design Approval from Municipality |  | 7d | 2019-02-09 | 2019-02-16 | 7 | 2019-02-09 | 2019-02-16 | 7d | 0d |  | 6 Day Cal |  |  |  |  |
| 11 | 1.1.9 | Install Fence for Project Site |  | 5d | 2019-02-11 | 2019-02-18 | 6, 15SF | 2019-02-11 | 2019-02-18 | 5d | 5d |  |  | Labor [200%] | 80h | 1,600 | 1,600 |
| 12 | 1.1.10 | Procure Architectural Material |  | 20d | 2019-02-18 | 2019-03-15 | 10 | 2019-02-18 | 2019-03-15 | 20d | 50d | 0d |  | Procurement Engineer | 160h | 6,400 | 6,400 |
| 13 | 1.1.11 | Ship Architectural Material |  | 10d | 2019-03-18 | 2019-03-29 | 12 | 2019-03-18 | 2019-03-29 | 10d | 50d |  |  | Transportation Company [0.1%] |  | 2,000 | 2,000 |
| 14 | 1.2 | **Construction** |  | 72d | 2019-02-18 | 2019-05-28 |  | 2019-02-18 | 2019-05-22 | 68d | 0d |  |  |  | 1608h | 38,360 | 38,360 |
| 15 | 1.2.1 | Excavate |  | 5d | 2019-02-18 | 2019-02-22 | 8, 10 | 2019-02-18 | 2019-02-22 | 5d | 0d |  |  | Excavator; Labor [200%] | 120h | 4,600 | 4,600 |
| 16 | 1.2.2 | Construct Foundation |  | 11d | 2019-02-25 | 2019-03-11 | 15, 11 | 2019-02-25 | 2019-03-11 | 11d | 0d |  |  | Labor [200%] | 176h | 3,520 | 3,520 |
| 17 | 1.2.3 | Construct Columns & Beams & Slab |  | 13d | 2019-03-12 | 2019-03-28 | 16 | 2019-03-12 | 2019-03-28 | 13d | 0d |  |  | Labor [200%] | 208h | 4,160 | 4,160 |
| 18 | 1.2.4 | Install Bricks |  | 5d | 2019-03-29 | 2019-04-04 | 17 | 2019-03-29 | 2019-04-04 | 5d | 0d |  |  | Labor [300%]; Brick [40 m2] | 120h | 6,400 | 6,400 |
| 19 | 1.2.5 | Install Roof |  | 7d | 2019-05-07 | 2019-05-28 | 17 | 2019-03-29 | 2019-04-08 | 7d | 8d |  |  | Labor [300%] | 168h | 3,360 | 3,360 |
| 20 | 1.2.6 | Perform Plumbing Works |  | 15d | 2019-04-05 | 2019-04-25 | 18 | 2019-04-05 | 2019-04-25 | 15d | 7d |  |  | Labor | 120h | 2,400 | 2,400 |
| 21 | 1.2.7 | Perform Mechanical Works |  | 20d | 2019-04-05 | 2019-05-02 | 18 | 2019-04-05 | 2019-05-02 | 20d | 2d |  |  | Labor | 160h | 3,200 | 3,200 |
| 22 | 1.2.8 | Perform Electrical Works |  | 22d | 2019-04-05 | 2019-05-06 | 18 | 2019-04-05 | 2019-05-06 | 22d | 0d |  |  | Labor | 176h | 3,520 | 3,520 |
| 23 | 1.2.9 | Perform Architectural Work |  | 23d | 2019-04-11 | 2019-05-13 | 18, 20FF+5d, 21FF+5d, 22FF+5d | 2019-04-11 | 2019-05-13 | 23d | 0d |  |  | Labor | 184h | 3,680 | 3,680 |
| 24 | 1.2.10 | Install Fence & Gate |  | 4d | 2019-05-14 | 2019-05-17 | 23 | 2019-05-14 | 2019-05-17 | 4d | 3d |  |  | Labor [200%] | 64h | 1,280 | 1,280 |
| 25 | 1.2.11 | Place Grass and Flowers |  | 7d | 2019-05-14 | 2019-05-22 | 23 | 2019-05-14 | 2019-05-22 | 7d | 0d |  |  | Labor [200%] | 112h | 2,240 | 2,240 |

| ID | WBS | Task | Type | Duration | Start | Finish | Predecessors | Baseline start | Baseline finish | Baseline duration | Total slack | Resources | Work | Cost | Baseline cost |
| --- | --- | --- | --- | --- | --- | --- | --- | --- | --- | --- | --- | --- | --- | --- | --- |
| 26 | 1.3 | **Close‐out** |  | 12d | 2019-05-23 | 2019-06-07 |  | 2019-05-23 | 2019-06-07 | 12d | 0d |  | 32h | 15,640 | 15,640 |
| 27 | 1.3.1 | Clean the Project Site |  | 2d | 2019-05-23 | 2019-05-24 | 24, 25 | 2019-05-23 | 2019-05-24 | 2d | 0d | Labor [200%] | 32h | 640 | 640 |
| 28 | 1.3.2 | Get Project Completion Approval |  | 5d | 2019-05-27 | 2019-05-31 | 27 | 2019-05-27 | 2019-05-31 | 5d | 0d | Engineering Consultant [0.1%] |  | 10,000 | 10,000 |
| 29 | 1.3.3 | Demobilize |  | 5d | 2019-06-03 | 2019-06-07 | 28 | 2019-06-03 | 2019-06-07 | 5d | 0d | Mobilization [0.1%] |  | 5,000 | 5,000 |
| 30 | 1.3.4 | Project Completion | milestone | 0d | 2019-06-07 | 2019-06-07 | 29 | 2019-06-07 | 2019-06-07 | 0d | 0d |  |  |  |  |
