# Cihan-Project

Schedule from MS Project, 2019-01-02 to 2019-06-07, costs in ₺.

## Calendars

- Standart: Mon-Fri 08:00-12:00, 13:00-17:00; Sat-Sun off.
- 6 Day Call: Mon-Fri 08:00-12:00, 13:00-17:00; Sat-Sun off. Exceptions (off unless hours are given): 2019-03-18 (1), 2019-03-19 (2), 2019-03-20 (3), 2019-03-21 (4), 2019-03-22 (5), 2019-03-23 (6).

## Resources

| Resource | Unit | Rate |
| --- | --- | --- |
| Mobilization |  | 125 |
| Labor |  | 20 |
| Scheduler |  | 60 |
| Architect |  | 80 |
| Procurement Engineer |  | 40 |
| Engineering Consultant |  |  |
| Excavator |  | 75 |
| Brick | m2 | 100 |
| Mobilization |  |  |
| Transportation Company |  |  |
| Engineering Consultant |  | 5000 |
| Transportation Company |  | 2000 |

## Schedule

| ID | Task | Type | Duration | Start | Finish | Predecessors | Baseline start | Baseline finish | Baseline duration | Calendar | Resources | Work | Cost | Baseline cost |
| --- | --- | --- | --- | --- | --- | --- | --- | --- | --- | --- | --- | --- | --- | --- |
| 1 | Villa Project | manual | 113d | 2019-01-02 | 2019-06-07 |  | 2019-01-02 | 2019-06-07 | 113d |  |  |  | 93,400 | 93,400 |
| 2 | Pre-construction | manual | 63d | 2019-01-02 | 2019-03-29 |  | 2019-01-02 | 2019-03-29 | 63d |  |  |  | 39,400 | 39,400 |
| 3 | Start Project | milestone, manual | 0d | 2019-01-02 | 2019-01-02 |  | 2019-01-02 | 2019-01-02 | 0d |  |  |  |  |  |
| 4 | Decide Project Team | manual | 5d | 2019-01-02 | 2019-01-08 | 3 | 2019-01-02 | 2019-01-08 | 5d |  | Mobilization | 40h |  |  |
| 5 | Prepare Project Baselines | manual | 10d | 2019-01-04 | 2019-01-17 | 4SS+2d | 2019-01-04 | 2019-01-17 | 10d |  | Scheduler | 80h | 4,800 | 4,800 |
| 6 | Project Kick‐off Meeting | manual | 1d | 2019-01-18 | 2019-01-18 | 5 | 2019-01-18 | 2019-01-18 | 1d |  | Mobilization | 8h |  |  |
| 7 | Design the Villa | manual | 15d | 2019-01-21 | 2019-02-08 | 6 | 2019-01-21 | 2019-02-08 | 15d |  | Architect | 120h | 9,600 | 9,600 |
| 8 | Mobilize Equipment | manual | 20d | 2019-01-21 | 2019-02-15 | 6 | 2019-01-21 | 2019-02-15 | 20d |  | Mobilization | 160h | 5,000 | 5,000 |
| 9 | Get Design Approval | manual | 5d | 2019-03-07 | 2019-03-13 | 7 | 2019-03-07 | 2019-03-13 | 5d | 6 Day Call | Engineering Consultant | 40h | 10,000 | 10,000 |
| 10 | Get Design Approval from Municipality | manual | 7d | 2019-02-11 | 2019-02-19 | 7 | 2019-02-11 | 2019-02-19 | 7d | 6 Day Call |  |  |  |  |
| 11 | Install Fence for Project Site | manual | 5d | 2019-02-13 | 2019-02-19 | 6, 15SF | 2019-02-13 | 2019-02-19 | 5d |  | Labor [200%] | 80h | 1,600 | 1,600 |
| 12 | Procure Architectural Material | manual | 20d | 2019-02-20 | 2019-03-19 | 10 | 2019-02-20 | 2019-03-19 | 20d |  | Procurement Engineer | 160h | 6,400 | 6,400 |
| 13 | Ship Architectural Material | manual | 10d | 2019-03-20 | 2019-04-02 | 12 | 2019-03-20 | 2019-04-02 | 10d |  | Transportation Company | 80h | 2,000 | 2,000 |
| 14 | Construction | manual | 68d | 2019-02-18 | 2019-05-22 |  | 2019-02-18 | 2019-05-22 | 68d |  |  |  | 38,360 | 38,360 |
| 15 | Excavate | manual | 5d | 2019-02-20 | 2019-02-26 | 10, 8 | 2019-02-20 | 2019-02-26 | 5d |  | Excavator; Labor [200%] | 120h | 4,600 | 4,600 |
| 16 | Construct Foundation | manual | 11d | 2019-02-27 | 2019-03-13 | 15, 11 | 2019-02-27 | 2019-03-13 | 11d |  | Labor [200%] | 176h | 3,520 | 3,520 |
| 17 | Construct Columns & Beams & Slab | manual | 13d | 2019-03-14 | 2019-04-01 | 16 | 2019-03-14 | 2019-04-01 | 13d |  | Labor [200%] | 208h | 4,160 | 4,160 |
| 18 | Install Bricks | manual | 5d | 2019-04-02 | 2019-04-08 | 17 | 2019-04-02 | 2019-04-08 | 5d |  | Labor [300%]; Brick [40 m2] | 120h | 6,400 | 6,400 |
| 19 | Install Roof | manual | 7d | 2019-05-09 | 2019-05-17 | 17 | 2019-04-02 | 2019-04-10 | 7d |  | Labor [300%] | 168h | 3,360 | 3,360 |
| 20 | Perform Plumbing Works | manual | 15d | 2019-04-09 | 2019-04-29 | 18 | 2019-04-09 | 2019-04-29 | 15d |  | Labor | 120h | 2,400 | 2,400 |
| 21 | Perform Mechanical Works | manual | 20d | 2019-04-09 | 2019-05-06 | 18 | 2019-04-09 | 2019-05-06 | 20d |  | Labor | 160h | 3,200 | 3,200 |
| 22 | Perform Electrical Works | manual | 22d | 2019-04-09 | 2019-05-08 | 18 | 2019-04-09 | 2019-05-08 | 22d |  | Labor | 176h | 3,520 | 3,520 |
| 23 | Perform Architectural Work | manual | 23d | 2019-04-15 | 2019-05-15 | 18, 20FF+5d, 21FF+5d, 22FF+5d | 2019-04-15 | 2019-05-15 | 23d |  | Labor | 184h | 3,680 | 3,680 |
| 24 | Install Fence & Gate | manual | 4d | 2019-02-04 | 2019-02-07 | 23 | 2019-02-04 | 2019-02-07 | 4d |  | Labor [200%] | 64h | 1,280 | 1,280 |
| 25 | Place Grass and Flowers | manual | 7d | 2019-02-04 | 2019-02-12 | 23 | 2019-02-04 | 2019-02-12 | 7d |  | Labor [200%] | 112h | 2,240 | 2,240 |
| 26 | Close-out | manual | 12d | 2019-05-23 | 2019-06-07 |  | 2019-05-23 | 2019-06-07 | 12d |  |  |  | 15,640 | 15,640 |
| 27 | Clean the Project Site | manual | 2d | 2019-02-13 | 2019-02-14 | 24, 25 | 2019-02-13 | 2019-02-14 | 2d |  | Labor [200%] | 32h | 640 | 640 |
| 28 | Get Project Completion Approval | manual | 5d | 2019-02-15 | 2019-02-21 | 27 | 2019-02-15 | 2019-02-21 | 5d |  | Engineering Consultant [0.1%] |  | 10,000 | 10,000 |
| 29 | Demobilize | manual | 5d | 2019-02-22 | 2019-02-28 | 28 | 2019-02-22 | 2019-02-28 | 5d |  | Mobilization | 40h | 5,000 | 5,000 |
| 30 | Project Completion | milestone, manual | 0d | 2019-03-01 | 2019-03-01 | 29 | 2019-03-01 | 2019-03-01 | 0d |  |  |  |  |  |
